# QLDA

How a schedule from MS Project changed from version to version. A marks actual dates.

## Version 1 (saved 2019-12-03)

Note of the change: add project

| ID | WBS | Task | Duration | Start | Finish | Predecessors | Total float |
| --- | --- | --- | --- | --- | --- | --- | --- |
| 1 | 1 | **Xây dựng website xem phim và dịch vụ hosting** | 43d | 2020-01-01 | 2020-02-28 |  | 0d |
| 2 | 1.1 | **Xây dựng website xem phim** | 43d | 2020-01-01 | 2020-02-28 |  | 0d |
| 3 |  | Lấy yêu cầu khách hàng | 3d | 2020-01-01 | 2020-01-03 |  | 3d |
| 4 | 1.1.2 | **Phân tích và thiết kế** | 27d | 2020-01-06 | 2020-02-11 | 3 | 3d |
| 5 | 1.1.2.1 | **Phân tích và thiết kế Front-end Site** | 16d | 2020-01-08 | 2020-01-29 |  | 3d |
| 6 | 1.1.2.1.1 | **Phân tích, thiết kế giao diện** | 16d | 2020-01-08 | 2020-01-29 | 27 | 1d |
| 7 |  | Thiết kế giao diện trang chủ | 3d | 2020-01-08 | 2020-01-10 |  | 8d |
| 8 |  | Thiết kế giao diện trang xem phim | 3d | 2020-01-13 | 2020-01-15 |  | 0d |
| 9 |  | Thiết kế giao diện trang chi tiết phim | 2d | 2020-01-20 | 2020-01-21 |  | 1d |
| 10 |  | Thiết kế giao diện trang tìm kiếm | 1d | 2020-01-22 | 2020-01-22 |  | 4d |
| 11 |  | Thiết kế giao diện tương thích với các thiết bị | 3d | 2020-01-27 | 2020-01-29 | 7, 8, 9 | 1d |
| 12 | 1.1.2.1.2 | **Phân tích, thiết kế chức năng** | 8d | 2020-01-08 | 2020-01-17 | 27 | 10d |
| 13 |  | Phân tích, thiết kế chức năng xem phim | 2d | 2020-01-13 | 2020-01-14 |  | 18d |
| 14 |  | Phân tích thiết kế chức năng tìm kiếm | 2d | 2020-01-16 | 2020-01-17 |  | 16d |
| 15 |  | Phân tích, thiết kế chức năng đăng nhập | 1d | 2020-01-17 | 2020-01-17 |  | 11d |
| 16 |  | Phân tích thiết kế chức năng bình luận | 1d | 2020-01-17 | 2020-01-17 |  | 9d |
| 17 |  | Phân tích, thiết kế chức năng theo dõi thói quen người dùng | 3d | 2020-01-08 | 2020-01-10 |  | 10d |
| 18 | 1.1.2.2 | **Phân tích và thiết kế Back-end Site** | 8d | 2020-01-15 | 2020-01-24 |  | 11d |
| 19 | 1.1.2.2.1 | **Phân tích, thiết kế giao diện** | 7d | 2020-01-16 | 2020-01-24 | 27 | 7d |
| 20 |  | Thiết kế giao diện trang quản trị phim | 1d | 2020-01-16 | 2020-01-16 |  | 10d |
| 21 |  | Thiết kế giao diện trang quản trị quản lý | 1d | 2020-01-17 | 2020-01-17 |  | 9d |
| 22 |  | Thiết kế giao diện tương thích với thiết bị | 2d | 2020-01-23 | 2020-01-24 | 20, 21 | 7d |
| 23 | 1.1.2.2.2 | **Phân tích, thiết kế chức năng** | 2d | 2020-01-15 | 2020-01-16 | 27 | 16d |
| 24 |  | Phân tích, thiết kế chức năng quản trị phim | 2d | 2020-01-15 | 2020-01-16 |  | 20d |
| 25 |  | Phân tích, thiết kế chức năng quản trị quản lý | 2d | 2020-01-15 | 2020-01-16 |  | 16d |
| 26 | 1.1.2.3 | **Phân tích và thiết kế bảo mật** | 27d | 2020-01-06 | 2020-02-11 |  | 3d |
| 27 |  | Phân tích, thiết kế cơ sở dữ liệu | 2d | 2020-01-06 | 2020-01-07 |  | 3d |
| 28 | 1.1.2.3.2 | **Phân tích, thiết kế phân quyền** | 2d | 2020-02-10 | 2020-02-11 | 27 | 13d |
| 29 |  | Phân tích, thiết kế quyền trên cơ sở dữ liệu | 1d | 2020-02-10 | 2020-02-10 |  | 14d |
| 30 |  | Phân tích, thiết kế nhóm quyền trên cơ sỡ dữ liệu | 1d | 2020-02-11 | 2020-02-11 |  | 13d |
| 31 |  | Phân tích, thiết kế sao lưu và phục hồi | 1d | 2020-02-11 | 2020-02-11 | 27 | 13d |
| 32 | 1.1.3 | **Xây dựng** | 29d | 2020-01-13 | 2020-02-20 |  | 1d |
| 33 | 1.1.3.1 | **Xây dựng Front-end Site** | 29d | 2020-01-13 | 2020-02-20 |  | 1d |
| 34 | 1.1.3.1.1 | **Xây dựng giao diện** | 29d | 2020-01-13 | 2020-02-20 |  | 0d |
| 35 |  | Xây dựng giao diện trang chủ | 4d | 2020-01-13 | 2020-01-16 | 7 | 10d |
| 36 |  | Xây dựng giao diện trang xem phim | 4d | 2020-01-27 | 2020-01-30 | 8 | 0d |
| 37 |  | Xây dựng giao diện trang chi tiết phim | 2d | 2020-01-24 | 2020-01-27 | 9 | 3d |
| 38 |  | Xây dựng giao diện trang tìm kiếm | 1d | 2020-01-24 | 2020-01-24 | 10 | 4d |
| 39 |  | Xây dựng giao diện tương thích với thiết bị | 5d | 2020-02-14 | 2020-02-20 | 11, 35, 36, 37, 38 | 0d |
| 40 | 1.1.3.1.2 | **Xây dựng chức năng** | 16d | 2020-01-20 | 2020-02-10 | 55 | 9d |
| 41 |  | Xây dựng chức năng xem phim | 5d | 2020-01-20 | 2020-01-24 | 13 | 19d |
| 42 |  | Xây dựng chức năng tìm kiếm | 2d | 2020-01-28 | 2020-01-29 | 14 | 16d |
| 43 |  | Xây dựng chức năng đăng nhập | 1d | 2020-02-06 | 2020-02-06 | 15 | 11d |
| 44 |  | Xây dựng chức năng bình luận | 1d | 2020-02-10 | 2020-02-10 | 16 | 9d |
| 45 |  | Xây dựng chức năng theo dõi thói quen người dùng | 5d | 2020-02-03 | 2020-02-07 | 17 | 9d |
| 46 | 1.1.3.2 | **Xây dựng Back-end Site** | 16d | 2020-01-17 | 2020-02-07 |  | 8d |
| 47 | 1.1.3.2.1 | **Xây dựng giao diện** | 16d | 2020-01-17 | 2020-02-07 |  | 7d |
| 48 |  | Xây dựng giao diện trang quản trị phim | 3d | 2020-01-17 | 2020-01-21 | 20 | 10d |
| 49 |  | Xây dựng giao diện trang quản trị quản lý | 3d | 2020-01-20 | 2020-01-22 | 21 | 9d |
| 50 |  | Xây dựng giao diện tương thích với thiết bị | 4d | 2020-02-04 | 2020-02-07 | 22, 48, 49 | 7d |
| 51 | 1.1.3.2.2 | **Xây dựng chức năng** | 3d | 2020-01-20 | 2020-01-22 | 55 | 17d |
| 52 |  | Xây dựng chức năng quản trị phim | 3d | 2020-01-20 | 2020-01-22 | 24 | 20d |
| 53 |  | Xây dựng chức năng quản trị quản lý | 3d | 2020-01-20 | 2020-01-22 | 25 | 17d |
| 54 | 1.1.3.3 | **Xây dựng bảo mật** | 13d | 2020-01-13 | 2020-01-29 |  | 14d |
| 55 |  | Xây dựng cơ sở dữ liệu | 2d | 2020-01-13 | 2020-01-14 | 27 | 14d |
| 56 | 1.1.3.3.2 | **Xây dựng phân quyền** | 2d | 2020-01-28 | 2020-01-29 |  | 16d |
| 57 |  | Xây dựng quyền trên cơ sở dữ liệu | 1d | 2020-01-28 | 2020-01-28 | 55 | 17d |
| 58 |  | Xây dựng nhóm quyền trên cơ sở dữ liệu | 1d | 2020-01-29 | 2020-01-29 | 55 | 16d |
| 59 |  | Xây dựng sao lưu và phục hồi | 3d | 2020-01-23 | 2020-01-27 | 55 | 14d |
| 60 | 1.1.4 | **Kiểm thử và khắc phục** | 29d | 2020-01-15 | 2020-02-24 |  | 0d |
| 61 | 1.1.4.1 | **Kiểm thử, khắc phục Front-end Site** | 27d | 2020-01-17 | 2020-02-24 |  | 0d |
| 62 | 1.1.4.1.1 | **Kiểm thử, khắc phục giao diện** | 27d | 2020-01-17 | 2020-02-24 |  | 0d |
| 63 |  | Kiểm thử, khắc phục giao diện trang chủ | 2d | 2020-01-17 | 2020-01-20 | 35 | 25d |
| 64 |  | Kiểm thử, khắc phục giao diện trang xem phim | 1d | 2020-02-03 | 2020-02-03 | 36 | 15d |
| 65 |  | Kiểm thử, khắc phục giao diện trang chi tiết phim | 2d | 2020-01-28 | 2020-01-29 | 37 | 18d |
| 66 |  | Kiểm thử, khắc phục trang tìm kiếm | 1d | 2020-01-24 | 2020-01-27 | 38 | 20d |
| 67 |  | Kiểm thử, khắc phục tương thích của giao diện | 2d | 2020-02-21 | 2020-02-24 | 39 | 0d |
| 68 | 1.1.4.1.2 | **Kiểm thử, khắc phục chức năng** | 13d | 2020-01-27 | 2020-02-12 |  | 8d |
| 69 |  | Kiểm thử, khắc phục chức năng xem phim | 2d | 2020-01-27 | 2020-01-28 | 41 | 19d |
| 70 |  | Kiểm thử, khắc phục chức năng đăng nhập | 1d | 2020-02-07 | 2020-02-07 | 43 | 11d |

| ID | WBS | Task | Duration | Start | Finish | Predecessors | Total float |
| --- | --- | --- | --- | --- | --- | --- | --- |
| 71 |  | Kiểm thử, khắc phục chức năng bình luận | 1d | 2020-02-12 | 2020-02-12 | 44 | 8d |
| 72 |  | Kiểm thử, khắc phục chức năng tìm kiếm | 2d | 2020-01-30 | 2020-01-31 | 42 | 16d |
| 73 |  | Kiểm thử, khắc phục chức năng theo dõi thông tin người dùng | 2d | 2020-02-10 | 2020-02-11 | 45 | 9d |
| 74 | 1.1.4.2 | **Kiểm thử, khắc phục Back-end Site** | 17d | 2020-01-22 | 2020-02-13 |  | 7d |
| 75 | 1.1.4.2.1 | **Kiểm thử, khắc phục giao diện** | 17d | 2020-01-22 | 2020-02-13 |  | 7d |
| 76 |  | Kiểm thử, khắc phục giao diện quản trị phim | 2d | 2020-01-22 | 2020-01-23 | 48 | 22d |
| 77 |  | Kiểm thử, khắc phục giao diện quản trị quản lý | 2d | 2020-01-23 | 2020-01-24 | 49 | 21d |
| 78 |  | Kiểm thử, khắc phục tương thích của giao diện | 4d | 2020-02-10 | 2020-02-13 | 50 | 7d |
| 79 | 1.1.4.2.2 | **Kiểm thử, khắc phục chức năng** | 5d | 2020-01-24 | 2020-01-30 |  | 17d |
| 80 |  | Kiểm thử, khắc phục chức năng quản trị phim | 2d | 2020-01-24 | 2020-01-27 | 52 | 20d |
| 81 |  | Kiểm thử, khắc phục chức năng quản trị quản lý | 2d | 2020-01-29 | 2020-01-30 | 53 | 17d |
| 82 | 1.1.4.3 | **Kiểm thử, khắc phục bảo mật** | 15d | 2020-01-15 | 2020-02-04 |  | 14d |
| 83 |  | Kiểm thử, khắc phục cơ sở dữ liệu | 1d | 2020-01-15 | 2020-01-15 | 55 | 28d |
| 84 |  | Kiểm thử, khắc phục phân quyền | 2d | 2020-01-30 | 2020-01-31 | 56 | 16d |
| 85 |  | Kiểm thử, khắc phục sao lưu và phục hồi | 2d | 2020-02-03 | 2020-02-04 | 59 | 14d |
| 86 | 1.1.5 | **Deploy** | 4d | 2020-02-25 | 2020-02-28 | 90, 60 | 0d |
| 87 |  | Cấu hình môi trường deploy | 1d | 2020-02-25 | 2020-02-25 |  | 0d |
| 88 |  | Deploy sản phẩm lên môi trường | 1d | 2020-02-26 | 2020-02-26 | 87 | 0d |
| 89 |  | Kiểm thử và khắc phục sản phẩm trên môi trường deploy | 2d | 2020-02-27 | 2020-02-28 | 88 | 0d |
| 90 | 1.2 | **Dịch cụ hosting** | 29d | 2020-01-06 | 2020-02-13 | 3 | 7d |
| 91 |  | Lấy yêu cầu khách hàng về hosting | 2d | 2020-01-06 | 2020-01-07 | 3 | 7d |
| 92 |  | Chọn hosting và nhận phản hồi từ khách hàng | 4d | 2020-01-08 | 2020-01-13 | 91 | 7d |
| 93 |  | Xác nhận hosting với bên thứ ba | 1d | 2020-01-14 | 2020-01-14 | 92 | 7d |
| 94 |  | Cấu hình hosting | 2d | 2020-02-04 | 2020-02-05 | 93 | 7d |
| 95 |  | Kiểm tra và khắc phục cấu hình hosting | 2d | 2020-02-12 | 2020-02-13 | 94 | 7d |

## Version 2 (saved 2019-12-13)

Note of the change: xong 3 chuong

Last finish 2020-02-28 → 2020-03-02 (+3d).

Added:

| ID | Task | Duration | Start | Finish | Predecessors | Resources |
| --- | --- | --- | --- | --- | --- | --- |
| 95 | Bàn giao | 1d | 2020-03-02 | 2020-03-02 | 89 | BA; Back-end Dev; Designer; Front-end Dev; Tester |

Removed: 93 Xác nhận hosting với bên thứ ba

Changed:

| ID | Task | Start | Finish | Duration | Total float | Predecessors | Other |
| --- | --- | --- | --- | --- | --- | --- | --- |
| 4 | **Phân tích và thiết kế** |  | 2020-02-11 → 2020-02-12 (+1d) | 27d → 28d |  |  |  |
| 26 | **Phân tích và thiết kế bảo mật** |  | 2020-02-11 → 2020-02-12 (+1d) | 27d → 28d |  |  |  |
| 31 | Phân tích, thiết kế sao lưu và phục hồi | 2020-02-11 → 2020-02-12 (+1d) | 2020-02-11 → 2020-02-12 (+1d) |  | 13d → 12d |  |  |
| 40 | **Xây dựng chức năng** |  | 2020-02-10 → 2020-02-07 (-3d) | 16d → 15d | 9d → 10d |  |  |
| 43 | Xây dựng chức năng đăng nhập | 2020-02-06 → 2020-02-04 (-2d) | 2020-02-06 → 2020-02-04 (-2d) |  | 11d → 13d |  |  |
| 44 | Xây dựng chức năng bình luận | 2020-02-10 → 2020-02-06 (-4d) | 2020-02-10 → 2020-02-06 (-4d) |  | 9d → 11d |  |  |
| 68 | **Kiểm thử, khắc phục chức năng** |  | 2020-02-12 → 2020-02-11 (-1d) | 13d → 12d | 8d → 9d |  |  |
| 70 | Kiểm thử, khắc phục chức năng đăng nhập | 2020-02-07 → 2020-02-05 (-2d) | 2020-02-07 → 2020-02-05 (-2d) |  | 11d → 13d |  |  |
| 71 | Kiểm thử, khắc phục chức năng bình luận | 2020-02-12 → 2020-02-07 (-5d) | 2020-02-12 → 2020-02-07 (-5d) |  | 8d → 11d |  |  |
| 90 | **Dịch cụ hosting** |  | 2020-02-13 → 2020-02-11 (-2d) | 29d → 27d | 7d → 8d |  |  |
| 91 | Lấy yêu cầu khách hàng về hosting | 2020-01-06 → 2020-01-07 (+1d) | 2020-01-07 → 2020-01-08 (+1d) |  | 7d → 29d |  |  |
| 92 | Chọn hosting | 2020-01-08 → 2020-01-09 (+1d) | 2020-01-13 → 2020-01-14 (+1d) |  | 7d → 29d |  | was named Chọn hosting và nhận phản hồi từ khách hàng |
| 93 | Cấu hình hosting | 2020-02-04 → 2020-01-06 (-29d) | 2020-02-05 → 2020-01-07 (-29d) |  | 7d → 8d | Xác nhận hosting với bên thứ ba → none |  |
| 94 | Kiểm tra và khắc phục cấu hình hosting | 2020-02-12 → 2020-02-10 (-2d) | 2020-02-13 → 2020-02-11 (-2d) |  | 7d → 9d |  |  |
